# ProjetSSI

Schedule from GanttProject, 2013-11-27 to 2014-02-28.

## Calendars

- Project calendar: Mon-Fri working; Sat-Sun off.

## Resources

| Resource |
| --- |
| Emile |
| Jean-Baptiste |
| Julien |
| Ouissem |
| Yves |

## Schedule

| ID | WBS | Task | Duration | Start | Finish | Predecessors | Constraint |
| --- | --- | --- | --- | --- | --- | --- | --- |
| 1 | 1 | Rédaction des documents | 37d | 2013-11-27 | 2014-01-16 |  |  |
| 2 | 2 | Début du projet | 1d | 2014-01-17 | 2014-01-17 | 1 |  |
| 3 | 3 | Prise en compte des remarques sur les documents | 3d | 2014-01-20 | 2014-01-22 |  |  |
| 4 | 4 | **Développement proxy applicatif** | 10d | 2014-01-20 | 2014-01-31 | 2 |  |
| 5 | 4.1 | Développement structure proxy | 3d | 2014-01-20 | 2014-01-22 | 2 |  |
| 6 | 4.2 | Installation autorité sur client par admin | 3d | 2014-01-23 | 2014-01-27 | 2, 3 | start no earlier than 2014-01-22 |
| 7 | 4.3 | Installateur autorité sur client par client | 1d | 2014-01-23 | 2014-01-23 | 2, 3 |  |
| 8 | 4.4 | Etablissement d'une connexion chiffrée | 1d | 2014-01-23 | 2014-01-23 | 2, 5 |  |
| 9 | 4.5 | Transchiffrement des paquets | 1d | 2014-01-24 | 2014-01-24 | 8 |  |
| 10 | 4.6 | Génération d'un certificat | 1d | 2014-01-23 | 2014-01-23 | 2, 3 |  |
| 11 | 4.7 | Tests unitaires | 1d | 2014-01-28 | 2014-01-28 | 6, 8, 9, 10 |  |
| 12 | 4.8 | Rédaction de la documentation | 1d | 2014-01-28 | 2014-01-28 | 6 |  |
| 13 | 4.9 | Intégration des composants de l'application | 1d | 2014-01-28 | 2014-01-28 | 6 |  |
| 14 | 4.10 | Tests d'intégration | 1d | 2014-01-29 | 2014-01-29 | 13 |  |
| 15 | 4.11 | Livraison | 1d | 2014-01-30 | 2014-01-30 | 14 |  |
| 16 | 4.12 | Prise en compte des remarques du Client | 1d | 2014-01-31 | 2014-01-31 | 15 |  |
| 17 | 5 | **Etude forge faux certificats** | 22d | 2014-01-20 | 2014-02-18 |  |  |
| 18 | 5.1 | Etat de l'art collisions MD5 | 8d | 2014-01-20 | 2014-01-29 | 2 |  |
| 19 | 5.2 | Rapport faisabilité collision | 3d | 2014-01-30 | 2014-02-03 | 18 |  |
| 20 | 5.3 | Développement application recherche collision | 5d | 2014-02-04 | 2014-02-10 | 19 |  |
| 21 | 5.4 | Lancement programme recherche collisions | 4d | 2014-02-11 | 2014-02-14 | 20 |  |
| 22 | 5.5 | Rédaction dossier récapitulatif | 4d | 2014-02-04 | 2014-02-07 | 19 |  |
| 23 | 5.6 | Livraison | 1d | 2014-02-17 | 2014-02-17 | 21, 22 |  |
| 24 | 5.7 | Prise en compte des remarques | 1d | 2014-02-18 | 2014-02-18 | 23 |  |
| 25 | 6 | Livraison finale | 1d | 2014-02-19 | 2014-02-19 | 3, 24 |  |
| 26 | 7 | Préparation de la revue | 1d | 2014-02-20 | 2014-02-20 | 25 |  |
| 27 | 8 | Revue de fin de projet | 1d | 2014-02-28 | 2014-02-28 | 26 | start no earlier than 2014-02-28 |
